# BITTRADE交易平台

Schedule from MS Project, 2019-06-27 to 2019-08-21.

## Calendars

- 标准: Mon-Fri 08:00-12:00, 13:00-17:00; Sat-Sun off.

## Resources

| Resource |
| --- |
| 黑带 |
| 工作组 |
| 黑带/绿带 |

## Schedule

| ID | WBS | Task | Duration | Start | Finish | Predecessors | Total slack | Free slack | Constraint |
| --- | --- | --- | --- | --- | --- | --- | --- | --- | --- |
| 1 | 1 | 架构选型、搭建 | 5d | 2019-06-27 | 2019-07-03 |  | 1d |  | start no earlier than 2019-06-27 |
| 2 | 2 | **数据库设计** | 3d | 2019-06-27 | 2019-07-01 |  |  |  |  |
| 3 | 2.1 | 委托表 | 0.2d | 2019-06-27 | 2019-06-27 |  | 2.8d |  |  |
| 4 | 2.2 | 委托明细表 | 0.2d | 2019-06-27 | 2019-06-27 |  | 2.8d |  |  |
| 5 | 2.3 | 币币钱包表 | 0.2d | 2019-06-27 | 2019-06-27 |  | 2.8d |  |  |
| 6 | 2.4 | 币币钱包流水表 | 0.2d | 2019-06-27 | 2019-06-27 |  | 2.8d |  |  |
| 7 | 2.5 | K先历史表 | 0.2d | 2019-06-27 | 2019-06-27 |  | 2.8d |  |  |
| 8 | 2.6 | 币种表 | 0.2d | 2019-06-28 | 2019-06-28 |  | 3.8d |  | start no earlier than 2019-06-28 |
| 9 | 2.7 | 交易对表 | 0.2d | 2019-06-28 | 2019-06-28 |  | 3.8d |  | start no earlier than 2019-06-28 |
| 10 | 2.8 | 钱包提币地址管理 | 0.2d | 2019-06-28 | 2019-06-28 |  | 3.8d |  | start no earlier than 2019-06-28 |
| 11 | 2.9 | 充提币钱包记录表 | 0.2d | 2019-06-28 | 2019-06-28 |  | 3.8d |  | start no earlier than 2019-06-28 |
| 12 | 2.10 | 资金划转明细表 | 0.2d | 2019-07-01 | 2019-07-01 |  | 2.8d |  | start no earlier than 2019-07-01 |
| 13 | 2.11 | **币币交易功能模块** | 21d | 2019-07-01 | 2019-07-29 |  |  |  |  |
| 14 | 2.11.1 | **币币交易接口** | 21d | 2019-07-01 | 2019-07-29 |  |  |  |  |
| 15 | 2.11.1.1 | 查询所有交易对信息接口 | 1d? | 2019-07-01 | 2019-07-01 |  | -17d | 0d |  |
| 16 | 2.11.1.2 | 查询个人当前委托接口 | 1d? | 2019-07-01 | 2019-07-01 |  | -15d | 0d |  |
| 17 | 2.11.1.3 | 查询个人历史委托接口 | 1d? | 2019-07-02 | 2019-07-02 | 15 | -17d | 0d |  |
| 18 | 2.11.1.4 | 查询个人成交明细接口 | 1d? | 2019-07-03 | 2019-07-03 | 17 | -17d | 0d |  |
| 19 | 2.11.1.5 | 限价买入/市价买入接口 | 1d? | 2019-07-04 | 2019-07-04 | 16, 18 | -17d | 0d |  |
| 20 | 2.11.1.6 | 限价卖出/市价卖出接口 | 1d | 2019-07-05 | 2019-07-05 | 19 | -17d | 0d |  |
| 21 | 2.11.1.7 | 个人委托撤单接口 | 1d | 2019-07-08 | 2019-07-08 | 20 | -17d | 0d |  |
| 22 | 2.11.1.8 | 个人实时成交数据接口 | 1d | 2019-07-09 | 2019-07-09 | 21 | -17d | 0d |  |
| 23 | 2.11.1.9 | 查询用户钱包 | 1d | 2019-07-10 | 2019-07-10 | 22 | -17d | 0d |  |
| 24 | 2.11.1.10 | 查询K先历史数据接口 | 1d | 2019-07-11 | 2019-07-11 | 23 | -17d | 0d |  |
| 25 | 2.11.1.11 | websocket推送实时行情程序 | 4d | 2019-07-12 | 2019-07-17 | 24 | -17d | 0d |  |
| 26 | 2.11.1.12 | 从okex获取K线历史数据 | 4d | 2019-07-18 | 2019-07-23 | 25 | -17d | 0d |  |
| 27 | 2.11.1.13 | 从okex获取交易对行情价 | 4d | 2019-07-24 | 2019-07-29 | 26 | -17d | 0d |  |
| 28 | 2.11.1.14 | 币币交易订单撮合程序 | 5d | 2019-07-30 | 2019-08-05 | 27 | -17d | 0d |  |
| 29 | 2.11.1.15 | 生成K线、行情数据程序 | 5d | 2019-08-06 | 2019-08-12 | 28 | -17d | 0d |  |
| 30 | 2.11.1.16 | 获取汇率接口 | 2d | 2019-08-13 | 2019-08-14 | 29 | -17d | 0d |  |
| 31 | 2.11.1.17 | 机器人刷单程序 | 5d | 2019-08-15 | 2019-08-21 | 30 | -17d | 0d |  |

Notes:
- 13: 周期的这个阶段的目的是了解客户、用户的质量关键特征(CTQ)问题，以及了解项目涉及的核心业务过程。在此阶段结束时，工作组应制定一个章程，说明业务流程的范围及其开始/停止点。另外，还要制定此阶段的过程流程图。
- 14: 周期的这个阶段的目的是了解客户、用户的质量关键特征(CTQ)问题，以及了解项目涉及的核心业务过程。在此阶段结束时，工作组应制定一个章程，说明业务流程的范围及其开始/停止点。另外，还要制定此阶段的过程流程图。
- 15: CTQ (质量关键特征)是指产品或过程的可评估关键特征；为达到客户要求，产品或过程必须满足性能标准或规范限制。可以根据用户需求来调整改进措施或设计工作。
- 19: 此阶段的关键可交付结果为客户和项目 CTQ 列表，工作组章程，以及一个高级流程图(用于描述此过程的供应商-输入-过程-输出-客户(SIPOC)流程、价值流图和变化管理过程)。

| ID | WBS | Task | Duration | Start | Finish | Predecessors | Total slack | Free slack | Constraint |
| --- | --- | --- | --- | --- | --- | --- | --- | --- | --- |
| 32 | 2.12 | **币币交易功能模块** | 14d? | 2019-07-01 | 2019-07-18 |  | -3d | 0d |  |
| 33 | 2.12.1 | 提币功能 | 4d | 2019-07-01 | 2019-07-04 |  | 30d | 0d | start no earlier than 2019-07-01 |
| 34 | 2.12.2 | 充币功能 | 4d | 2019-07-05 | 2019-07-10 | 33 | 30d |  |  |
| 35 | 2.12.3 | 充币记录 | 1d? | 2019-07-10 | 2019-07-10 |  | -10d | 0d | start no earlier than 2019-07-10 |
| 36 | 2.12.4 | 提币记录 | 1d? | 2019-07-11 | 2019-07-11 | 35 | -10d | 0d |  |
| 37 | 2.12.5 | C2C钱包和币币钱包划转 | 2d | 2019-07-12 | 2019-07-15 | 36 | -10d | 0d |  |
| 38 | 2.12.6 | C2C钱包和币币钱包划转记录 | 1d? | 2019-07-12 | 2019-07-12 |  | -9d | 0d | start no earlier than 2019-07-12 |
| 39 | 2.12.7 | 提币地址管理 | 1d? | 2019-07-16 | 2019-07-16 |  | -13d | 0d | start no earlier than 2019-07-16 |
| 40 | 2.12.8 | 币币账户资金汇总接口 | 1d? | 2019-07-17 | 2019-07-17 | 39 | -13d | 0d |  |
| 41 | 2.12.9 | 币币账户个人钱包信息 | 1d? | 2019-07-18 | 2019-07-18 | 40 | -13d | 0d |  |

Notes:
- 32: 周期的这个阶段的目的是了解客户、用户的质量关键特征(CTQ)问题，以及了解项目涉及的核心业务过程。在此阶段结束时，工作组应制定一个章程，说明业务流程的范围及其开始/停止点。另外，还要制定此阶段的过程流程图。
