# BITTRADE交易平台

Schedule from MS Project, 2019-07-02 to 2019-07-25.

## Calendars

- 标准: Mon-Fri 08:00-12:00, 13:00-17:00; Sat-Sun off. Exceptions (off unless hours are given): 2019-07-20 08:00-12:00, 13:00-17:00.

## Resources

| Resource |
| --- |
| 黑带 |
| 工作组 |
| 黑带/绿带 |
| 李嘉利 |
| 黄泽涵 |

## Schedule

| ID | WBS | Task | Duration | Start | Finish | Predecessors | Total slack | Free slack | Constraint | Resources | Work |
| --- | --- | --- | --- | --- | --- | --- | --- | --- | --- | --- | --- |
| 1 | 1 | **钱包功能开发阶段** | 15d | 2019-07-02 | 2019-07-20 |  |  |  |  |  | 152h |
| 2 | 1.1 | 充币功能 | 3d | 2019-07-02 | 2019-07-04 |  | 12d |  | start no earlier than 2019-07-02 | 李嘉利 | 24h |
| 3 | 1.2 | 提币功能 | 3d | 2019-07-04 | 2019-07-08 |  | 8d | 0d | start no earlier than 2019-07-04 | 李嘉利 | 24h |
| 4 | 1.3 | 充提币记录 | 1d? | 2019-07-09 | 2019-07-09 | 3 | 12d | 0d | start no earlier than 2019-07-09 | 李嘉利 | 8h |
| 5 | 1.4 | 提币地址管理 | 1d? | 2019-07-10 | 2019-07-10 | 4 | 12d |  | start no earlier than 2019-07-10 | 李嘉利 | 8h |
| 6 | 1.5 | 提现审核 | 1d? | 2019-07-11 | 2019-07-11 |  | 7d |  | start no earlier than 2019-07-11 | 李嘉利 | 8h |
| 7 | 1.6 | 创建用户钱包地址 | 1d? | 2019-07-12 | 2019-07-12 |  | 8d | 0d | start no earlier than 2019-07-12 | 李嘉利 | 8h |
| 8 | 1.7 | 币种提现手续费设置 | 1d? | 2019-07-15 | 2019-07-15 | 7 | 9d |  |  | 李嘉利 | 8h |
| 9 | 1.8 | 获取资金账户可提现金额 | 1d? | 2019-07-16 | 2019-07-16 |  | 7d |  | start no earlier than 2019-07-16 | 李嘉利 | 8h |
| 10 | 1.9 | 联调测试 | 2d | 2019-07-17 | 2019-07-18 |  | 5d |  | start no earlier than 2019-07-17 | 李嘉利 | 16h |
| 11 | 1.10 | 创建资金账户 | 0.5d | 2019-07-15 | 2019-07-15 |  | 8.5d |  | start no earlier than 2019-07-15 | 黄泽涵 | 4h |
| 12 | 1.11 | 查询资金账户、法币账户可划转金额 | 0.5d | 2019-07-15 | 2019-07-15 |  | 8.5d |  | start no earlier than 2019-07-15 | 黄泽涵 | 4h |
| 13 | 1.12 | 查询资金账户明细及汇总 | 1d | 2019-07-16 | 2019-07-16 |  | 7d |  | start no earlier than 2019-07-16 | 黄泽涵 | 8h |
| 14 | 1.13 | 资金账户和法币账户的资金划转 | 2d | 2019-07-17 | 2019-07-18 |  | 4d | 0d | start no earlier than 2019-07-17 | 黄泽涵 | 16h |
| 15 | 1.14 | 资金账户和法币账户资金划转记录 | 1d | 2019-07-19 | 2019-07-19 | 14 | 5d |  |  | 黄泽涵 | 8h |
| 16 | 2 | **钱包功能测试阶段** | 5d | 2019-07-20 | 2019-07-25 |  |  |  |  |  |  |
| 17 | 2.1 | XXXX | 5d | 2019-07-20 | 2019-07-25 |  | 0d |  | start no earlier than 2019-07-20 |  |  |
| 18 | 3 | **上线** | 1d | 2019-07-25 | 2019-07-25 |  |  |  |  |  |  |
| 19 | 3.1 | 上线做准备工作 | 1d | 2019-07-25 | 2019-07-25 |  | 0d |  | start no earlier than 2019-07-25 |  |  |

Notes:
- 1: 周期的这个阶段的目的是了解客户、用户的质量关键特征(CTQ)问题，以及了解项目涉及的核心业务过程。在此阶段结束时，工作组应制定一个章程，说明业务流程的范围及其开始/停止点。另外，还要制定此阶段的过程流程图。
- 16: 周期的这个阶段的目的是了解客户、用户的质量关键特征(CTQ)问题，以及了解项目涉及的核心业务过程。在此阶段结束时，工作组应制定一个章程，说明业务流程的范围及其开始/停止点。另外，还要制定此阶段的过程流程图。
- 18: 周期的这个阶段的目的是了解客户、用户的质量关键特征(CTQ)问题，以及了解项目涉及的核心业务过程。在此阶段结束时，工作组应制定一个章程，说明业务流程的范围及其开始/停止点。另外，还要制定此阶段的过程流程图。
